# 臺北花卉批發市場新建工程暨臺灣國際花卉貿易中心（大基地）-建築工程

Schedule from MS Project, 2009-12-01 to 2012-01-10.

## Calendars

- CAT: Mon-Sun 08:00-12:00, 13:00-17:00.

## Schedule

| ID | WBS | Task | Duration | Start | Finish | Predecessors | Total slack | Free slack | Constraint |
| --- | --- | --- | --- | --- | --- | --- | --- | --- | --- |
| 1 | 1 | **政府機構行政程序** | 771d | 2009-12-01 | 2012-01-10 |  | 0d |  |  |
| 2 | 1.1 | **台北市政府環保局申請管制編號** | 8d | 2009-12-01 | 2009-12-08 |  | 734d | 0d |  |
| 3 | 1.1.1 | 臺北市營建工程空氣污染防制費首期申報表首頁起造人用印 | 1d | 2009-12-01 | 2009-12-01 |  | 702d | 0d | start no earlier than 2009-12-01 |
| 4 | 1.1.2 | 建照整份起造人用印 | 1d | 2009-12-01 | 2009-12-01 |  | 729d | 0d | start no earlier than 2009-12-01 |
| 5 | 1.1.3 | 位置圖起造人用印 | 1d | 2009-12-01 | 2009-12-01 |  | 729d | 0d | start no earlier than 2009-12-01 |
| 6 | 1.1.4 | 送環保局申請管制編號 | 7d | 2009-12-02 | 2009-12-08 | 3, 4, 5 | 729d |  | start no earlier than 2009-12-01 |
| 7 | 1.2 | **報開工核准** | 27d | 2009-12-09 | 2010-01-04 |  | 735d | 0d |  |
| 8 | 1.2.1 | 電信設備設計圖說及專業技師簽證送電信審查核可 | 20d | 2009-12-16 | 2010-01-04 | 3FS+14d | 703d | 0d | start no earlier than 2009-09-03 |
| 9 | 1.2.2 | 繳納空污費收據 | 1d | 2009-12-09 | 2009-12-09 | 2 | 729d |  |  |
| 10 | 1.2.3 | 執照正本 | 1d | 2010-01-04 | 2010-01-04 | 8FF | 735d |  | start no earlier than 2009-09-30 |
| 11 | 1.2.4 | 當年度技師會員證 | 1d | 2010-01-04 | 2010-01-04 | 8FF | 735d |  |  |
| 12 | 1.2.5 | 營造業承攬手冊 | 1d | 2010-01-04 | 2010-01-04 | 8FF | 735d |  |  |
| 13 | 1.2.6 | 開工報告書7份 | 1d | 2010-01-04 | 2010-01-04 | 8FF | 735d |  |  |
| 14 | 1.2.7 | 位置圖1份（A3或A4規格） | 1d | 2010-01-04 | 2010-01-04 | 8FF | 735d |  |  |
| 15 | 1.2.8 | 查報表2份 | 1d | 2010-01-04 | 2010-01-04 | 8FF | 735d |  |  |
| 16 | 1.2.9 | 開工資料登錄表1份 | 1d | 2010-01-04 | 2010-01-04 | 8FF | 735d |  |  |
| 17 | 1.3 | **施工計畫書審查** | 1d | 2010-01-05 | 2010-01-05 | 7 | 735d |  |  |
| 18 | 1.3.1 | 施工計畫書資料(起承監簽名用印) | 1d | 2010-01-05 | 2010-01-05 |  | 735d |  | start no earlier than 2009-10-16 |
| 19 | 1.3.2 | 建物請照圖(承監用印)1份 | 1d | 2010-01-05 | 2010-01-05 |  | 735d |  | start no earlier than 2009-10-16 |
| 20 | 1.3.3 | 施工進度表及勘驗順序表 | 1d | 2010-01-05 | 2010-01-05 |  | 735d |  | start no earlier than 2009-10-16 |
| 21 | 1.3.4 | 五大查線表 | 1d | 2010-01-05 | 2010-01-05 |  | 735d |  | start no earlier than 2009-10-16 |
| 22 | 1.3.5 | 勞安人員證書及緊急事故應變計畫表 | 1d | 2010-01-05 | 2010-01-05 |  | 735d |  | start no earlier than 2009-10-16 |
| 23 | 1.3.6 | 現況實測圖13份 | 1d | 2010-01-05 | 2010-01-05 |  | 735d |  | start no earlier than 2009-10-16 |
| 24 | 1.3.7 | 建築線指示圖正本 | 1d | 2010-01-05 | 2010-01-05 |  | 735d |  | start no earlier than 2009-10-16 |
| 25 | 1.3.8 | 複丈成果圖 | 1d | 2010-01-05 | 2010-01-05 |  | 735d |  | start no earlier than 2009-10-16 |
| 26 | 1.3.9 | 現地照片 | 1d | 2010-01-05 | 2010-01-05 |  | 735d |  | start no earlier than 2009-10-16 |
| 27 | 1.3.10 | 監造人、工地主任、技師現場拿白板拍照 | 1d | 2010-01-05 | 2010-01-05 |  | 703d |  | start no earlier than 2009-10-16 |

| ID | WBS | Task | Duration | Start | Finish | Predecessors | Total slack | Free slack | Constraint |
| --- | --- | --- | --- | --- | --- | --- | --- | --- | --- |
| 28 | 1.4 | **必勘層為：放樣勘驗核准** | 90d | 2009-12-01 | 2010-02-28 |  | 681d | 0d |  |
| 29 | 1.4.1 | **交通維持計畫** | 30d | 2009-12-01 | 2009-12-30 |  | 734d | 21d |  |
| 30 | 1.4.1.1 | 建築執照影本 | 1d | 2009-12-01 | 2009-12-01 | 3SS | 731d |  |  |
| 31 | 1.4.1.2 | 工程進度表 | 1d | 2009-12-01 | 2009-12-01 |  | 731d |  | start no earlier than 2009-12-01 |
| 32 | 1.4.1.3 | 棄土地點及數量 | 1d | 2009-12-01 | 2009-12-01 |  | 731d |  | start no earlier than 2009-12-01 |
| 33 | 1.4.1.4 | 起造人、承造人、監造人、工地主任、里長之姓名、公司、電話與地址，里名與工地電話 | 1d | 2009-12-01 | 2009-12-01 |  | 731d |  | start no earlier than 2009-12-01 |
| 34 | 1.4.1.5 | 執照圖及結構平面圖CAD檔 | 1d | 2009-12-01 | 2009-12-01 |  | 731d |  | start no earlier than 2009-12-01 |
| 35 | 1.4.1.6 | 預拌混凝土廠商及電話地址 | 1d | 2009-12-01 | 2009-12-01 |  | 731d |  | start no earlier than 2009-12-01 |
| 36 | 1.4.1.7 | 地上層吊裝(鋼構或裝修) | 1d | 2009-12-01 | 2009-12-01 |  | 729d |  | start no earlier than 2009-12-01 |
| 37 | 1.4.1.8 | 構台位置圖及面積 | 1d | 2009-12-01 | 2009-12-01 |  | 731d |  | start no earlier than 2009-12-01 |
| 38 | 1.4.1.9 | 假設工程平面圖 | 1d | 2009-12-01 | 2009-12-01 |  | 731d |  | start no earlier than 2009-12-01 |
| 39 | 1.4.1.10 | 行政機構送審 | 30d | 2009-12-01 | 2009-12-30 |  | 702d |  | start no earlier than 2009-12-01 |
| 40 | 1.4.2 | **逕流廢水削減計畫** | 30d | 2009-12-01 | 2009-12-30 |  | 734d | 21d |  |
| 41 | 1.4.2.1 | 建築執照影本 | 1d | 2009-12-01 | 2009-12-01 | 3SS | 763d |  |  |
| 42 | 1.4.2.2 | 執照圖及結構平面圖CAD檔 | 1d | 2009-12-02 | 2009-12-02 | 3 | 730d |  |  |
| 43 | 1.4.2.3 | 行政機構送審 | 30d | 2009-12-01 | 2009-12-30 | 3SS | 702d |  |  |
| 44 | 1.4.3 | 消防審查核准文 | 30d | 2009-12-01 | 2009-12-30 | 3SS | 741d |  | start no earlier than 2009-09-07 |
| 45 | 1.4.4 | 自來水審查核准文 | 14d | 2009-12-01 | 2009-12-14 | 3SS | 757d |  | finish no earlier than 2009-10-06 |
| 46 | 1.4.5 | 衛工審查核准文 | 30d | 2009-12-01 | 2009-12-30 | 3SS | 741d |  | start no earlier than 2009-09-08 |
| 47 | 1.4.6 | 紅磚斜坡道送新工處審核可文 | 30d | 2009-12-01 | 2009-12-30 | 3SS | 734d | 21d | start no earlier than 2009-09-09 |
| 48 | 1.4.7 | 橫越人行道下方用戶排水管埋設深度需為23公分以上，並將圖說送本府工務局新建工程處審核 | 5d | 2009-12-01 | 2009-12-05 | 3SS | 727d | 46d | start no earlier than 2009-10-12 |
| 49 | 1.4.8 | 公會核准棄土計畫 | 14d | 2009-12-01 | 2009-12-14 | 3SS | 757d |  |  |
| 50 | 1.4.9 | 申請至現場勘驗 | 7d | 2010-01-21 | 2010-01-27 | 47, 29, 40, 48, 70 | 681d |  |  |
| 51 | 1.4.10 | 簽准(春節過後) | 7d | 2010-02-22 | 2010-02-28 |  | 663d | 0d | start no earlier than 2010-02-22 |

| ID | WBS | Task | Duration | Start | Finish | Predecessors | Total slack | Free slack | Constraint |
| --- | --- | --- | --- | --- | --- | --- | --- | --- | --- |
| 52 | 1.5 | **基礎版勘驗** | 100d | 2009-12-01 | 2010-03-10 |  | 663d | 0d |  |
| 53 | 1.5.1 | 四聯單 | 10d | 2010-03-01 | 2010-03-10 | 51 | 640d |  |  |
| 54 | 1.5.2 | 建築設備(包括電力.避雷)核准文.技師簽證報告及圖說,暨建築師交由專業技師委託書 | 30d | 2009-12-01 | 2009-12-30 | 28SS | 733d |  | start no earlier than 2009-09-08 |
| 55 | 1.6 | B1F版勘驗 | 1d | 2010-03-18 | 2010-03-18 | 52FS+7d | 640d |  |  |
| 56 | 1.7 | 必勘層為：1F版勘驗(深基) | 1d | 2010-11-27 | 2010-11-27 | 155 | 418d |  |  |
| 57 | 1.8 | 3F版勘驗(深基) | 1d | 2010-12-19 | 2010-12-19 | 163 | 396d |  |  |
| 58 | 1.9 | 4F版勘驗(深基) | 1d | 2011-01-10 | 2011-01-10 | 171 | 374d |  |  |
| 59 | 1.10 | RF版勘驗(深基) | 1d | 2011-02-01 | 2011-02-01 | 179 | 352d |  |  |
| 60 | 1.11 | 必勘層為：1F版勘驗(淺基) | 1d | 2011-03-02 | 2011-03-02 | 189 | 314d |  |  |
| 61 | 1.12 | 必勘層為：2F版勘驗(淺基) | 1d | 2011-03-24 | 2011-03-24 | 197 | 292d |  |  |
| 62 | 1.13 | 3F版勘驗(淺基) | 1d | 2011-04-17 | 2011-04-17 | 206 | 268d |  |  |
| 63 | 1.14 | 4F版勘驗(淺基) | 1d | 2011-05-13 | 2011-05-13 | 216 | 242d |  |  |
| 64 | 1.15 | RF版勘驗(淺基) | 1d | 2011-06-21 | 2011-06-21 | 226 | 203d |  |  |
| 65 | 1.16 | 門牌申請 | 12d | 2011-06-25 | 2011-07-06 | 238 | 168d |  |  |
| 66 | 1.17 | 消防檢查 | 30d | 2011-12-12 | 2012-01-10 | 251 | 0d |  |  |
| 67 | 1.18 | 使照申請 | 30d | 2011-12-12 | 2012-01-10 | 251 | 0d |  |  |
| 68 | 2 | **整體施工** | 720d | 2010-01-11 | 2011-12-31 |  | 10d |  |  |
| 69 | 2.1 | **假設工程** | 33d | 2010-01-11 | 2010-02-12 |  | 697d |  |  |
| 70 | 2.1.1 | 施工圍籬及大門施作 | 10d | 2010-01-11 | 2010-01-20 |  | 679d | 0d | start no earlier than 2010-01-11 |
| 71 | 2.1.2 | 組合房屋 | 21d | 2010-01-11 | 2010-01-31 |  | 709d |  | start no earlier than 2010-01-11 |
| 72 | 2.1.3 | 臨時水電配置 | 32d | 2010-01-12 | 2010-02-12 |  | 663d |  | start no earlier than 2010-01-12 |
| 73 | 2.1.4 | 安全觀測系統施作 | 8d | 2010-01-21 | 2010-01-28 | 70 | 678d |  |  |
| 74 | 2.2 | **擋土工程** | 42d | 2010-02-22 | 2010-04-04 |  | 107d |  |  |
| 75 | 2.2.1 | 鋼板樁(199m) | 12d | 2010-02-22 | 2010-03-05 |  | 80d | 0d | start no earlier than 2010-02-22 |
| 76 | 2.2.2 | 預壘樁工程(∮50cm-400支) | 30d | 2010-03-06 | 2010-04-04 | 75 | 80d | 0d | finish no earlier than 2010-03-15 |
| 77 | 2.3 | 地質改良樁工程(3181支) | 80d | 2010-04-05 | 2010-06-23 | 76, 75 | 107d | 12d |  |

| ID | WBS | Task | Duration | Start | Finish | Predecessors | Baseline start | Baseline finish | Baseline duration | Total slack | Free slack | Constraint |
| --- | --- | --- | --- | --- | --- | --- | --- | --- | --- | --- | --- | --- |
| 78 | 2.4 | **基礎工程** | 215d | 2010-07-06 | 2011-02-05 |  |  |  |  | 95d |  |  |
| 79 | 2.4.1 | 深基ABC區土方開挖第一層GL-1.8m(全區) | 10d | 2010-07-06 | 2010-07-15 | 77 |  |  |  | 95d | 0d | finish no earlier than 2010-07-15 |
| 80 | 2.4.2 | 深基ABC區土方開挖第二層GL-4.9m(中間) | 15d | 2010-07-16 | 2010-07-30 | 79 |  |  |  | 451d | 0d |  |
| 81 | 2.4.3 | 深基ABC區土方開挖GL-4.9m(外圍) | 6d | 2010-09-14 | 2010-09-19 | 123 |  |  |  | 90d | 0d |  |
| 82 | 2.4.4 | 淺基D區土方開挖 | 5d | 2011-02-01 | 2011-02-05 | 179 |  |  |  | 171d | 0d |  |
| 83 | 2.4.5 | 鋼板樁及預壘樁回填土夯實 | 4d | 2010-11-27 | 2010-11-30 | 155 |  |  |  | 248d | 0d |  |
| 84 | 2.4.6 | 鋼板樁拔除 | 10d | 2010-12-01 | 2010-12-10 | 83 |  |  |  | 248d | 0d |  |
| 85 | 2.5 | **結構體工程** | 366d | 2010-07-23 | 2011-07-23 |  |  |  |  | 95d |  |  |
| 86 | 2.5.1 | **第A區-Y~Y7Line** | 53d | 2010-07-31 | 2010-09-21 |  |  |  |  | 476d |  |  |
| 87 | 2.5.1.1 | 接地系統施作(屬機電標) | 2d | 2010-07-31 | 2010-08-01 | 80 |  |  |  | 476d | 0d |  |
| 88 | 2.5.1.2 | PC澆置 | 1d | 2010-08-02 | 2010-08-02 | 87 |  |  |  | 476d | 0d |  |
| 89 | 2.5.1.3 | 放樣 | 1d | 2010-08-03 | 2010-08-03 | 88 | 2009-03-31 | 2009-03-31 | 1d | 476d | 0d |  |
| 90 | 2.5.1.4 | FS版樑鋼筋綁紮 | 10d | 2010-08-04 | 2010-08-13 | 89 | 2009-04-04 | 2009-04-06 | 3d | 476d | 0d |  |
| 91 | 2.5.1.5 | 地樑及FS組模 | 7d | 2010-08-14 | 2010-08-20 | 90 | 2009-04-01 | 2009-04-03 | 3d | 476d | 0d |  |
| 92 | 2.5.1.6 | 水電配管及標高器施作 | 2d | 2010-08-21 | 2010-08-22 | 91 |  |  |  | 476d | 0d |  |
| 93 | 2.5.1.7 | 監造查驗 | 2d | 2010-08-23 | 2010-08-24 | 92 |  |  |  | 476d | 0d |  |
| 94 | 2.5.1.8 | FS版混凝土澆置 | 1d | 2010-08-25 | 2010-08-25 | 93 | 2009-04-07 | 2009-04-07 | 1d | 476d | 0d |  |
| 95 | 2.5.1.9 | 放樣 | 1d | 2010-08-26 | 2010-08-26 | 94 | 2009-03-31 | 2009-03-31 | 1d | 476d | 0d |  |
| 96 | 2.5.1.10 | BS版柱牆鋼筋綁紮 | 6d | 2010-08-27 | 2010-09-01 | 95 | 2009-04-04 | 2009-04-06 | 3d | 476d | 0d |  |
| 97 | 2.5.1.11 | BS版組模 | 9d | 2010-09-02 | 2010-09-10 | 96 | 2009-04-01 | 2009-04-03 | 3d | 476d | 0d |  |
| 98 | 2.5.1.12 | 水電配管及標高器施作 | 2d | 2010-09-11 | 2010-09-12 | 97 |  |  |  | 476d | 0d |  |
| 99 | 2.5.1.13 | 監造查驗 | 2d | 2010-09-13 | 2010-09-14 | 98 |  |  |  | 476d | 0d |  |
| 100 | 2.5.1.14 | BS版混凝土澆置 | 1d | 2010-09-15 | 2010-09-15 | 99 | 2009-04-07 | 2009-04-07 | 1d | 476d | 0d |  |
| 101 | 2.5.1.15 | 放樣 | 1d | 2010-09-16 | 2010-09-16 | 100 |  |  |  | 476d | 0d |  |
| 102 | 2.5.1.16 | 臨時擋土RC墩鋼筋綁紮 | 2d | 2010-09-17 | 2010-09-18 | 101 |  |  |  | 476d | 0d |  |
| 103 | 2.5.1.17 | 臨時擋土RC墩組模 | 2d | 2010-09-19 | 2010-09-20 | 102 |  |  |  | 476d | 0d |  |
| 104 | 2.5.1.18 | 臨時擋土RC墩混凝土澆置 | 1d | 2010-09-21 | 2010-09-21 | 103 |  |  |  | 476d |  |  |

| ID | WBS | Task | Duration | Start | Finish | Predecessors | Baseline start | Baseline finish | Baseline duration | Total slack | Free slack |
| --- | --- | --- | --- | --- | --- | --- | --- | --- | --- | --- | --- |
| 105 | 2.5.2 | **第B區-Y7~Y12Line** | 58d | 2010-07-23 | 2010-09-18 |  |  |  |  | 95d |  |
| 106 | 2.5.2.1 | 接地系統施作(屬機電標) | 2d | 2010-07-23 | 2010-07-24 | 80SS+7d |  |  |  | 95d | 0d |
| 107 | 2.5.2.2 | PC澆置 | 1d | 2010-07-25 | 2010-07-25 | 106 |  |  |  | 95d | 0d |
| 108 | 2.5.2.3 | 放樣 | 1d | 2010-07-26 | 2010-07-26 | 107 | 2009-03-31 | 2009-03-31 | 1d | 95d | 0d |
| 109 | 2.5.2.4 | FS版樑鋼筋綁紮 | 10d | 2010-07-27 | 2010-08-05 | 108 | 2009-04-04 | 2009-04-06 | 3d | 95d | 0d |
| 110 | 2.5.2.5 | 地樑及FS組模 | 7d | 2010-08-06 | 2010-08-12 | 109 | 2009-04-01 | 2009-04-03 | 3d | 95d | 0d |
| 111 | 2.5.2.6 | 水電配管及標高器施作 | 2d | 2010-08-13 | 2010-08-14 | 110 |  |  |  | 95d | 0d |
| 112 | 2.5.2.7 | 監造查驗 | 2d | 2010-08-15 | 2010-08-16 | 111 |  |  |  | 95d | 0d |
| 113 | 2.5.2.8 | FS版混凝土澆置 | 1d | 2010-08-17 | 2010-08-17 | 112 | 2009-04-07 | 2009-04-07 | 1d | 95d | 0d |
| 114 | 2.5.2.9 | 放樣 | 1d | 2010-08-18 | 2010-08-18 | 113 | 2009-03-31 | 2009-03-31 | 1d | 95d | 0d |
| 115 | 2.5.2.10 | BS版柱牆鋼筋綁紮 | 6d | 2010-08-19 | 2010-08-24 | 114 | 2009-04-04 | 2009-04-06 | 3d | 95d | 0d |
| 116 | 2.5.2.11 | BS版組模 | 9d | 2010-08-25 | 2010-09-02 | 115 | 2009-04-01 | 2009-04-03 | 3d | 95d | 0d |
| 117 | 2.5.2.12 | 水電配管及標高器施作 | 2d | 2010-09-03 | 2010-09-04 | 116 |  |  |  | 95d | 0d |
| 118 | 2.5.2.13 | 監造查驗 | 2d | 2010-09-05 | 2010-09-06 | 117 |  |  |  | 95d | 0d |
| 119 | 2.5.2.14 | BS版混凝土澆置 | 1d | 2010-09-07 | 2010-09-07 | 118 | 2009-04-07 | 2009-04-07 | 1d | 95d | 0d |
| 120 | 2.5.2.15 | 放樣 | 1d | 2010-09-08 | 2010-09-08 | 119 |  |  |  | 95d | 0d |
| 121 | 2.5.2.16 | 臨時擋土RC墩鋼筋綁紮 | 2d | 2010-09-09 | 2010-09-10 | 120 |  |  |  | 95d | 0d |
| 122 | 2.5.2.17 | 臨時擋土RC墩組模 | 2d | 2010-09-11 | 2010-09-12 | 121 |  |  |  | 95d | 0d |
| 123 | 2.5.2.18 | 臨時擋土RC墩混凝土澆置 | 1d | 2010-09-13 | 2010-09-13 | 122 |  |  |  | 95d | 0d |
| 124 | 2.5.2.19 | 斜撐及支撐架設(AB區) | 5d | 2010-09-14 | 2010-09-18 | 123 |  |  |  | 479d |  |
| 125 | 2.5.3 | **第C區-AB區外圍** | 56d | 2010-09-20 | 2010-11-14 |  |  |  |  | 95d |  |
| 126 | 2.5.3.1 | 接地系統施作(屬機電標) | 2d | 2010-09-20 | 2010-09-21 | 81 |  |  |  | 95d | 0d |
| 127 | 2.5.3.2 | PC澆置 | 1d | 2010-09-22 | 2010-09-22 | 126 |  |  |  | 95d | 0d |
| 128 | 2.5.3.3 | 放樣 | 1d | 2010-09-23 | 2010-09-23 | 127 | 2009-03-31 | 2009-03-31 | 1d | 95d | 0d |
| 129 | 2.5.3.4 | FS版樑鋼筋綁紮 | 10d | 2010-09-24 | 2010-10-03 | 128 | 2009-04-04 | 2009-04-06 | 3d | 95d | 0d |
| 130 | 2.5.3.5 | 地樑及FS組模 | 7d | 2010-10-04 | 2010-10-10 | 129 | 2009-04-01 | 2009-04-03 | 3d | 95d | 0d |
| 131 | 2.5.3.6 | 水電配管及標高器施作(屬機電標) | 2d | 2010-10-11 | 2010-10-12 | 130 |  |  |  | 95d | 0d |
| 132 | 2.5.3.7 | 監造查驗 | 2d | 2010-10-13 | 2010-10-14 | 131 |  |  |  | 95d | 0d |
| 133 | 2.5.3.8 | FS版混凝土澆置 | 1d | 2010-10-15 | 2010-10-15 | 132 | 2009-04-07 | 2009-04-07 | 1d | 95d | 0d |
| 134 | 2.5.3.9 | BS版柱牆鋼筋綁紮 | 6d | 2010-10-16 | 2010-10-21 | 133 | 2009-04-04 | 2009-04-06 | 3d | 95d | 0d |
| 135 | 2.5.3.10 | BS版組模 | 9d | 2010-10-22 | 2010-10-30 | 134 | 2009-04-01 | 2009-04-03 | 3d | 95d | 0d |
| 136 | 2.5.3.11 | 水電配管及標高器施作 | 2d | 2010-10-31 | 2010-11-01 | 135 |  |  |  | 95d | 0d |
| 137 | 2.5.3.12 | 監造查驗 | 2d | 2010-11-02 | 2010-11-03 | 136 |  |  |  | 95d | 0d |
| 138 | 2.5.3.13 | BS版混凝土澆置 | 1d | 2010-11-04 | 2010-11-04 | 137 | 2009-04-07 | 2009-04-07 | 1d | 95d | 0d |
| 139 | 2.5.3.14 | 斜撐及支撐拆除 | 3d | 2010-11-12 | 2010-11-14 | 138FS+7d |  |  |  | 400d | 0d |

| ID | WBS | Task | Duration | Start | Finish | Predecessors | Total slack | Free slack |
| --- | --- | --- | --- | --- | --- | --- | --- | --- |
| 140 | 2.5.4 | **B1F-AB區-Y1~Y11Line(深基)** | 22d | 2010-11-15 | 2010-12-06 |  | 400d |  |
| 141 | 2.5.4.1 | 放樣 | 1d | 2010-11-15 | 2010-11-15 | 139 | 400d | 0d |
| 142 | 2.5.4.2 | B1F柱筋綁紮 | 4d | 2010-11-16 | 2010-11-19 | 141 | 400d | 0d |
| 143 | 2.5.4.3 | B1F柱版樑模板組立(搭配牆筋綁紮) | 6d | 2010-11-20 | 2010-11-25 | 142 | 400d | 0d |
| 144 | 2.5.4.4 | 1F版樑鋼筋綁紮 | 5d | 2010-11-26 | 2010-11-30 | 143 | 400d | 0d |
| 145 | 2.5.4.5 | 水電配管及標高器施作(屬機電標) | 3d | 2010-12-01 | 2010-12-03 | 144 | 400d | 0d |
| 146 | 2.5.4.6 | 監造查驗 | 2d | 2010-12-04 | 2010-12-05 | 145 | 400d | 0d |
| 147 | 2.5.4.7 | 1F版混凝土澆置(深基) | 1d | 2010-12-06 | 2010-12-06 | 146 | 400d |  |
| 148 | 2.5.5 | **B1F-C區-Y1~Y11Line(深基)** | 22d | 2010-11-05 | 2010-11-26 |  | 95d |  |
| 149 | 2.5.5.1 | 放樣 | 1d | 2010-11-05 | 2010-11-05 | 138 | 95d | 0d |
| 150 | 2.5.5.2 | B1F柱筋綁紮 | 4d | 2010-11-06 | 2010-11-09 | 149 | 95d | 0d |
| 151 | 2.5.5.3 | B1F柱版樑模板組立(搭配牆筋綁紮) | 6d | 2010-11-10 | 2010-11-15 | 150 | 95d | 0d |
| 152 | 2.5.5.4 | 1F版樑鋼筋綁紮 | 5d | 2010-11-16 | 2010-11-20 | 151 | 95d | 0d |
| 153 | 2.5.5.5 | 水電配管及標高器施作(屬機電標) | 3d | 2010-11-21 | 2010-11-23 | 152 | 95d | 0d |
| 154 | 2.5.5.6 | 監造查驗 | 2d | 2010-11-24 | 2010-11-25 | 153 | 95d | 0d |
| 155 | 2.5.5.7 | 1F版混凝土澆置(深基) | 1d | 2010-11-26 | 2010-11-26 | 154 | 95d | 0d |
| 156 | 2.5.6 | **2F-Y1~Y11Line(深基)** | 22d | 2010-11-27 | 2010-12-18 |  | 95d |  |
| 157 | 2.5.6.1 | 放樣 | 1d | 2010-11-27 | 2010-11-27 | 155 | 95d | 0d |
| 158 | 2.5.6.2 | 2F柱筋綁紮 | 4d | 2010-11-28 | 2010-12-01 | 157 | 95d | 0d |
| 159 | 2.5.6.3 | 2F柱模板組立(搭配牆筋綁紮) | 6d | 2010-12-02 | 2010-12-07 | 158 | 95d | 0d |
| 160 | 2.5.6.4 | 3F版樑鋼筋綁紮 | 5d | 2010-12-08 | 2010-12-12 | 159 | 95d | 0d |
| 161 | 2.5.6.5 | 水電配管及標高器施作(屬機電標) | 3d | 2010-12-13 | 2010-12-15 | 160 | 95d | 0d |
| 162 | 2.5.6.6 | 監造查驗 | 2d | 2010-12-16 | 2010-12-17 | 161 | 95d | 0d |
| 163 | 2.5.6.7 | 3F版混凝土澆置(深基) | 1d | 2010-12-18 | 2010-12-18 | 162 | 95d | 0d |

| ID | WBS | Task | Duration | Start | Finish | Predecessors | Baseline start | Baseline finish | Baseline duration | Total slack | Free slack |
| --- | --- | --- | --- | --- | --- | --- | --- | --- | --- | --- | --- |
| 164 | 2.5.7 | **3F-F-Y1~Y11Line(深基)** | 22d | 2010-12-19 | 2011-01-09 |  |  |  |  | 95d |  |
| 165 | 2.5.7.1 | 放樣 | 1d | 2010-12-19 | 2010-12-19 | 163 |  |  |  | 95d | 0d |
| 166 | 2.5.7.2 | 3F柱筋綁紮 | 4d | 2010-12-20 | 2010-12-23 | 165 |  |  |  | 95d | 0d |
| 167 | 2.5.7.3 | 3F柱版樑模板組立(搭配牆筋綁紮) | 6d | 2010-12-24 | 2010-12-29 | 166 |  |  |  | 95d | 0d |
| 168 | 2.5.7.4 | 4F版樑鋼筋綁紮 | 5d | 2010-12-30 | 2011-01-03 | 167 |  |  |  | 95d | 0d |
| 169 | 2.5.7.5 | 水電配管及標高器施作 | 3d | 2011-01-04 | 2011-01-06 | 168 |  |  |  | 95d | 0d |
| 170 | 2.5.7.6 | 監造查驗 | 2d | 2011-01-07 | 2011-01-08 | 169 |  |  |  | 95d | 0d |
| 171 | 2.5.7.7 | 4F版混凝土澆置(深基) | 1d | 2011-01-09 | 2011-01-09 | 170 |  |  |  | 95d | 0d |
| 172 | 2.5.8 | **4F-F-Y1~Y11Line(深基)** | 22d | 2011-01-10 | 2011-01-31 |  |  |  |  | 95d |  |
| 173 | 2.5.8.1 | 放樣 | 1d | 2011-01-10 | 2011-01-10 | 171 |  |  |  | 95d | 0d |
| 174 | 2.5.8.2 | 4F柱筋綁紮 | 4d | 2011-01-11 | 2011-01-14 | 173 |  |  |  | 95d | 0d |
| 175 | 2.5.8.3 | 4F柱版樑模板組立(搭配牆筋綁紮) | 6d | 2011-01-15 | 2011-01-20 | 174 |  |  |  | 95d | 0d |
| 176 | 2.5.8.4 | RF版樑鋼筋綁紮 | 5d | 2011-01-21 | 2011-01-25 | 175 |  |  |  | 95d | 0d |
| 177 | 2.5.8.5 | 水電配管及標高器施作(屬機電標) | 3d | 2011-01-26 | 2011-01-28 | 176 |  |  |  | 95d | 0d |
| 178 | 2.5.8.6 | 監造查驗 | 2d | 2011-01-29 | 2011-01-30 | 177 |  |  |  | 95d | 0d |
| 179 | 2.5.8.7 | RF版混凝土澆置(深基) | 1d | 2011-01-31 | 2011-01-31 | 178 |  |  |  | 95d | 0d |
| 180 | 2.5.9 | **FS-淺基-Y12~Y21Line** | 24d | 2011-02-06 | 2011-03-01 |  |  |  |  | 171d |  |
| 181 | 2.5.9.1 | 接地系統施作(屬機電標) | 2d | 2011-02-06 | 2011-02-07 | 82 |  |  |  | 171d | 0d |
| 182 | 2.5.9.2 | PC澆置 | 1d | 2011-02-08 | 2011-02-08 | 181 |  |  |  | 171d | 0d |
| 183 | 2.5.9.3 | 放樣 | 1d | 2011-02-09 | 2011-02-09 | 182 |  |  |  | 171d | 0d |
| 184 | 2.5.9.4 | 1F版柱筋綁紮 | 4d | 2011-02-10 | 2011-02-13 | 183 |  |  |  | 171d | 0d |
| 185 | 2.5.9.5 | 1F柱版樑模板組立(搭配牆筋綁紮) | 6d | 2011-02-14 | 2011-02-19 | 184 |  |  |  | 171d | 0d |
| 186 | 2.5.9.6 | 水電配管及標高器施作(屬機電標) | 3d | 2011-02-20 | 2011-02-22 | 185 |  |  |  | 171d | 0d |
| 187 | 2.5.9.7 | 鋼構預埋螺栓 | 4d | 2011-02-23 | 2011-02-26 | 186 |  |  |  | 171d | 0d |
| 188 | 2.5.9.8 | 監造查驗 | 2d | 2011-02-27 | 2011-02-28 | 187 |  |  |  | 171d | 0d |
| 189 | 2.5.9.9 | 1F版混凝土澆置(淺基) | 1d | 2011-03-01 | 2011-03-01 | 188 | 2009-04-07 | 2009-04-07 | 1d | 171d | 0d |

| ID | WBS | Task | Duration | Start | Finish | Predecessors | Baseline start | Baseline finish | Baseline duration | Total slack | Free slack |
| --- | --- | --- | --- | --- | --- | --- | --- | --- | --- | --- | --- |
| 190 | 2.5.10 | **1F-淺基-Y12~Y21Line** | 22d | 2011-03-02 | 2011-03-23 |  |  |  |  | 171d |  |
| 191 | 2.5.10.1 | 放樣 | 1d | 2011-03-02 | 2011-03-02 | 189 |  |  |  | 171d | 0d |
| 192 | 2.5.10.2 | 1F柱筋綁紮 | 4d | 2011-03-03 | 2011-03-06 | 191 |  |  |  | 171d | 0d |
| 193 | 2.5.10.3 | 1F柱版樑模板組立(搭配牆筋綁紮) | 6d | 2011-03-07 | 2011-03-12 | 192 |  |  |  | 171d | 0d |
| 194 | 2.5.10.4 | 2F版樑鋼筋綁紮 | 5d | 2011-03-13 | 2011-03-17 | 193 |  |  |  | 171d | 0d |
| 195 | 2.5.10.5 | 水電配管及標高器施作 | 3d | 2011-03-18 | 2011-03-20 | 194 |  |  |  | 171d | 0d |
| 196 | 2.5.10.6 | 監造查驗 | 2d | 2011-03-21 | 2011-03-22 | 195 |  |  |  | 171d | 0d |
| 197 | 2.5.10.7 | 2F版混凝土澆置(淺基) | 1d | 2011-03-23 | 2011-03-23 | 196 |  |  |  | 171d | 0d |
| 198 | 2.5.11 | **2F-淺基-Y12~Y21Line** | 24d | 2011-03-24 | 2011-04-16 |  |  |  |  | 171d |  |
| 199 | 2.5.11.1 | 放樣 | 1d | 2011-03-24 | 2011-03-24 | 197 |  |  |  | 171d | 0d |
| 200 | 2.5.11.2 | 2F柱筋綁紮 | 4d | 2011-03-25 | 2011-03-28 | 199 |  |  |  | 171d | 0d |
| 201 | 2.5.11.3 | 2F柱版樑模板組立(搭配牆筋綁紮) | 6d | 2011-03-29 | 2011-04-03 | 200 |  |  |  | 171d | 0d |
| 202 | 2.5.11.4 | 3F版樑鋼筋綁紮 | 5d | 2011-04-04 | 2011-04-08 | 201 |  |  |  | 171d | 0d |
| 203 | 2.5.11.5 | 鋼構預埋螺栓 | 2d | 2011-04-09 | 2011-04-10 | 202 |  |  |  | 171d | 0d |
| 204 | 2.5.11.6 | 水電配管及標高器施作(屬機電標) | 3d | 2011-04-11 | 2011-04-13 | 203 |  |  |  | 171d | 0d |
| 205 | 2.5.11.7 | 監造查驗 | 2d | 2011-04-14 | 2011-04-15 | 204 |  |  |  | 171d | 0d |
| 206 | 2.5.11.8 | 3F版混凝土澆置(淺基) | 1d | 2011-04-16 | 2011-04-16 | 205 | 2009-04-07 | 2009-04-07 | 1d | 171d | 0d |
| 207 | 2.5.12 | **3F-淺基-Y12~Y21Line** | 26d | 2011-04-17 | 2011-05-12 |  |  |  |  | 171d |  |
| 208 | 2.5.12.1 | 放樣 | 1d | 2011-04-17 | 2011-04-17 | 206 |  |  |  | 171d | 0d |
| 209 | 2.5.12.2 | 鋼構吊裝(鋼柱) | 2d | 2011-04-18 | 2011-04-19 | 208 |  |  |  | 171d | 0d |
| 210 | 2.5.12.3 | 3F柱筋綁紮 | 4d | 2011-04-20 | 2011-04-23 | 209 |  |  |  | 171d | 0d |
| 211 | 2.5.12.4 | 3F柱版樑模板組立(搭配牆筋綁紮) | 6d | 2011-04-24 | 2011-04-29 | 210 |  |  |  | 171d | 0d |
| 212 | 2.5.12.5 | 4F版樑鋼筋綁紮 | 5d | 2011-04-30 | 2011-05-04 | 211 |  |  |  | 171d | 0d |
| 213 | 2.5.12.6 | RC樑側預埋螺栓 | 2d | 2011-05-05 | 2011-05-06 | 212 |  |  |  | 171d | 0d |
| 214 | 2.5.12.7 | 水電配管及標高器施作(屬機電標) | 3d | 2011-05-07 | 2011-05-09 | 213 |  |  |  | 171d | 0d |
| 215 | 2.5.12.8 | 監造查驗 | 2d | 2011-05-10 | 2011-05-11 | 214 |  |  |  | 171d | 0d |
| 216 | 2.5.12.9 | 4F版混凝土澆置(淺基) | 1d | 2011-05-12 | 2011-05-12 | 215 | 2009-04-07 | 2009-04-07 | 1d | 171d | 0d |

| ID | WBS | Task | Duration | Start | Finish | Predecessors | Baseline start | Baseline finish | Baseline duration | Total slack | Free slack | Constraint |
| --- | --- | --- | --- | --- | --- | --- | --- | --- | --- | --- | --- | --- |
| 217 | 2.5.13 | **4F-淺基-Y12~Y21Line** | 72d | 2011-05-13 | 2011-07-23 |  |  |  |  | 171d |  |  |
| 218 | 2.5.13.1 | 放樣 | 1d | 2011-05-13 | 2011-05-13 | 216 |  |  |  | 171d | 0d | start no earlier than 2010-08-30 |
| 219 | 2.5.13.2 | 4F柱筋綁紮 | 4d | 2011-05-14 | 2011-05-17 | 218 |  |  |  | 171d | 0d |  |
| 220 | 2.5.13.3 | 4F柱版樑模板組立(搭配牆筋綁紮) | 6d | 2011-05-18 | 2011-05-23 | 219 |  |  |  | 171d | 0d |  |
| 221 | 2.5.13.4 | RF版樑鋼筋綁紮 | 5d | 2011-05-24 | 2011-05-28 | 220 |  |  |  | 171d | 0d |  |
| 222 | 2.5.13.5 | 版組模 | 15d | 2011-05-29 | 2011-06-12 | 221 | 2009-04-01 | 2009-04-03 | 3d | 171d | 0d |  |
| 223 | 2.5.13.6 | RC樑側預埋螺栓 | 2d | 2011-06-13 | 2011-06-14 | 222 |  |  |  | 171d | 0d |  |
| 224 | 2.5.13.7 | 水電配管及標高器施作(屬機電標) | 3d | 2011-06-15 | 2011-06-17 | 223 |  |  |  | 171d | 0d |  |
| 225 | 2.5.13.8 | 監造查驗 | 2d | 2011-06-18 | 2011-06-19 | 224 |  |  |  | 171d | 0d |  |
| 226 | 2.5.13.9 | RF版混凝土澆置(淺基) | 1d | 2011-06-20 | 2011-06-20 | 225 | 2009-04-07 | 2009-04-07 | 1d | 171d | 0d |  |
| 227 | 2.5.13.10 | 1F.4F.RF鋼構吊裝+DECK | 20d | 2011-06-21 | 2011-07-10 | 226 |  |  |  | 171d | 0d |  |
| 228 | 2.5.13.11 | 鋼筋綁紮 | 3d | 2011-07-11 | 2011-07-13 | 227 | 2009-04-04 | 2009-04-06 | 3d | 171d | 0d |  |
| 229 | 2.5.13.12 | 水電配管及標高器施作(屬機電標) | 3d | 2011-07-14 | 2011-07-16 | 228 |  |  |  | 171d | 0d |  |
| 230 | 2.5.13.13 | 監造查驗 | 5d | 2011-07-17 | 2011-07-21 | 229 |  |  |  | 171d | 0d |  |
| 231 | 2.5.13.14 | 4F.RF版混凝土澆置(淺基) | 2d | 2011-07-22 | 2011-07-23 | 230 |  |  |  | 171d |  |  |
| 232 | 2.6 | **外牆工程** | 93d | 2011-02-15 | 2011-05-18 |  |  |  |  | 81d |  |  |
| 233 | 2.6.1 | 清水模塗裝 | 90d | 2011-02-15 | 2011-05-15 | 179 |  |  |  | 81d | 30d | finish no earlier than 2011-05-15 |
| 234 | 2.6.2 | 馬賽克貼飾 | 31d | 2011-03-15 | 2011-04-14 | 179 |  |  |  | 271d |  | start no earlier than 2011-03-15 |
| 235 | 2.6.3 | 烤漆鋁鋅鋼浪板 | 45d | 2011-04-01 | 2011-05-15 | 179 |  |  |  | 240d |  | start no earlier than 2011-04-01 |
| 236 | 2.6.4 | 玻璃帷幕 | 65d | 2011-03-15 | 2011-05-18 | 179 |  |  |  | 237d |  | start no earlier than 2011-03-15 |
| 237 | 2.7 | 鷹架組立 | 20d | 2010-11-27 | 2010-12-16 | 155 |  |  |  | 390d |  |  |
| 238 | 2.8 | 鷹架拆除 | 10d | 2011-06-15 | 2011-06-24 | 233 |  |  |  | 51d | 0d | start no earlier than 2011-06-15 |
| 239 | 2.9 | **內部裝修工程** | 280d | 2010-12-11 | 2011-09-16 |  |  |  |  | 116d |  |  |
| 240 | 2.9.1 | 門窗工程 | 45d | 2011-04-01 | 2011-05-15 | 171 |  |  |  | 240d |  | start no earlier than 2011-04-01 |
| 241 | 2.9.2 | 輕隔間工程 | 30d | 2011-04-01 | 2011-04-30 | 171 |  |  |  | 255d |  | start no earlier than 2011-04-01 |
| 242 | 2.9.3 | 泥作工程 | 62d | 2011-04-01 | 2011-06-01 | 171 |  |  |  | 116d | 0d | start no earlier than 2011-04-01 |
| 243 | 2.9.4 | 防水工程 | 30d | 2010-12-11 | 2011-01-09 | 84 |  |  |  | 273d | 0d |  |
| 244 | 2.9.5 | 油漆工程 | 93d | 2011-01-10 | 2011-04-12 | 243 |  |  |  | 273d |  |  |
| 245 | 2.9.6 | 天花工程 | 45d | 2011-04-01 | 2011-05-15 | 171 |  |  |  | 240d |  | start no earlier than 2011-04-01 |
| 246 | 2.9.7 | 磁磚工程 | 45d | 2011-06-02 | 2011-07-16 | 242 |  |  |  | 116d | 0d | start no earlier than 2011-06-01 |
| 247 | 2.9.8 | 鐵件工程 | 32d | 2011-07-17 | 2011-08-17 | 246 |  |  |  | 146d |  | start no earlier than 2011-07-01 |
| 248 | 2.9.9 | 地坪工程 | 62d | 2011-07-17 | 2011-09-16 | 246 |  |  |  | 116d |  |  |
| 249 | 2.10 | 電梯安裝工程 | 45d | 2011-02-01 | 2011-03-17 | 179 |  |  |  | 292d | 0d |  |
| 250 | 2.11 | 電梯安檢證明 | 7d | 2011-03-18 | 2011-03-24 | 249 |  |  |  | 292d |  |  |
| 251 | 2.12 | 景觀工程 | 119d | 2011-08-15 | 2011-12-11 | 238 |  |  |  | 0d |  | start no earlier than 2011-08-15 |
| 252 | 2.13 | 竣工查驗 | 20d | 2011-12-12 | 2011-12-31 | 251 |  |  |  | 10d |  |  |
